# Simple Project Plan

Schedule from MS Project, 2018-07-20 to 2018-11-14, costs in €.

## Calendars

- Standard: Mon-Fri 08:00-12:00, 13:00-17:00; Sat-Sun off.

## Resources

| Resource | Group | Unit | Rate |
| --- | --- | --- | --- |
| Long Numair | Projektleitung |  | 50 |
| Achim Admin | Administrator |  | 18 |
| Claus Coder | Programmierer |  | 22 |
| Steven Sharp | Programmierer |  | 22 |
| Detlef Delphi | Programmierer |  | 22 |
| Peter Python | Programmierer |  | 22 |
| Pascal Paskal | Programmierer |  | 22 |
| Georg Graphic | Designer |  | 18.5 |
| Anne Adobe | Designer |  | 18.5 |
| Stephan Köpsel | IT-Sicherheit |  | 38 |
| Monika Mongo | Datenbankentwickler |  | 22 |
| Es Q'el | Datenbankentwickler |  | 22 |
| Constantin Consult | Berater |  | 16 |
| Leonard Latenz | Netzwerkspezialist |  | 18 |
| Jay Unit | Tester |  | 17.5 |
| Desirè Debug | Tester |  | 17.5 |
| Torben Tester | Tester |  | 17.5 |
| Willi Werkel | Werkstudent |  | 14 |
| Susi Sehr | Werkstudent |  | 14 |
| Markus Kannz | Werkstudent |  | 14 |
| Büroräume | Unterhaltungskosten |  |  |
| Parkplätze (16) | Unterhaltungskosten |  |  |
| Mahlzeiten (Mittag) | Unterhaltungskosten |  |  |
| Office-PC | Hardware | Stück | 800 |
| Office-VR-AR-PC | Hardware | Stück | 1400 |
| Visual Studio Enterprise | Software | Lizenz | 2575 |
| Oculus Rift | Hardware (VR) | Stück | 489 |
| VIVE HTC VR Brille | Hardware (VR) | Stück | 599 |
| Sony Playstation VR | Hardware (VR) | Stück | 229 |
| MS Hololens Dev | Hardware (VR/AR) | Stück | 3299 |
| Epson Moverio BT-300 | Hardware (AR) | Stück | 815 |
| Asus Mixed Reaöity Set HC102 | Hardware (VR/AR) | Stück | 450 |
| Apple Watch Series 3 | Hardware (Smartwatch) | Stück | 479 |
| Samsung Gear S3 Classic | Hardware (Smartwatch) | Stück | 221 |
| Asus ZenWatch 3 | Hardware (Smartwatch) | Stück | 199 |
| Huawei Watch 2 | Hardware (Smartwatch) | Stück | 240 |
| FRITZ!Box 7590 | Hardware (Netzwerk) | Stück | 250 |
| WD My Cloud Pro PR4100 (40TB) | Hardware (Netzwerk) | Stück | 2199 |
| Linksys Velop WiFi 3Pac | Hardware (Netzwerk) | Stück | 290 |
| Linksys LGS326 | Hardware (Netzwerk) | Stück | 155 |
| BLE-Beacon für Ausweise | Hardware (Locate) | Stück | 30 |
| infsoft Locatornodes (BLE, WLAN, RFID, UWB, GPS) | Hardware (Locate) | Stück | 150 |
| ServerPC (DBMS, Datenbank) | Hardware (Netzwerk) | Stück | 700 |

## Schedule

| ID | WBS | Task | Type | Duration | Start | Finish | Predecessors | Total slack | Free slack | Constraint | Resources | Work | Cost |
| --- | --- | --- | --- | --- | --- | --- | --- | --- | --- | --- | --- | --- | --- |
| 1 | 1 | **Projekt** |  | 84d | 2018-07-20 | 2018-11-14 |  | 0d |  |  | Büroräume [0.1%]; Mahlzeiten (Mittag) [0.1%]; Office-PC [20 Stück]; Parkplätze (16) [0.1%]; FRITZ!Box 7590 [1 Stück]; Linksys LGS326 [1 Stück]; Linksys Velop WiFi 3Pac [1 Stück]; WD My Cloud Pro PR4100 (40TB) [1 Stück] | 408h | 61,996 |
| 2 | 1.1 | **Analyse und Entwurf** |  | 26.88d | 2018-07-20 | 2018-08-27 |  | 0d |  |  |  | 408h | 10,772 |
| 3 | 1.1.1 | Konzeptdokumentation |  | 4d | 2018-07-20 | 2018-07-25 |  | 0d |  |  | Claus Coder; Long Numair; Peter Python; Torben Tester | 128h | 3,568 |
| 4 | 1.1.2 | Anforderungskatalog |  | 3d | 2018-07-26 | 2018-07-30 | 3 | 0d |  |  | Claus Coder; Long Numair; Peter Python | 72h | 2,256 |
| 5 | 1.1.3 | Product Backlog |  | 3d | 2018-07-31 | 2018-08-02 | 4 | 0d |  |  | Claus Coder; Long Numair; Pascal Paskal; Torben Tester | 96h | 2,676 |
| 6 | 1.1.4 | User Stories entwickeln und Taskcards ableiten |  | 2d | 2018-08-03 | 2018-08-06 | 5 | 0d |  |  | Claus Coder; Pascal Paskal | 32h | 704 |
| 7 | 1.1.5 | Sprint Backlogs ableiten |  | 2d | 2018-08-07 | 2018-08-08 | 6 | 0d |  |  | Claus Coder; Pascal Paskal | 32h | 704 |
| 8 | 1.1.6 | [Dokumentation] Analyse-Dokumentation |  | 5.62d | 2018-08-07 | 2018-08-27 | 6 | 57.12d |  |  | Peter Python; Willi Werkel | 48h | 864 |
| 9 | 1.1.7 | Analyse und Entwurf | milestone | 0d | 2018-08-08 | 2018-08-08 | 7 | 0d |  |  |  |  |  |
| 10 | 1.2 | **Prototyp 1 (Sensorvorführung)** |  | 24d | 2018-08-09 | 2018-09-11 | 9 | 0d |  |  |  |  |  |
| 11 | 1.2.1 | [Sensorik] BLE-RFID: Evaluieren |  | 2d | 2018-08-09 | 2018-08-10 | 9 | 0d |  | start no earlier than 2018-08-02 |  |  |  |
| 12 | 1.2.2 | [Sensorik] BLE-RFID: Analysieren |  | 2d | 2018-08-13 | 2018-08-14 | 11 | 66d |  |  |  |  |  |
| 13 | 1.2.3 | [Core] Datenauswertung: Auswerten v. Analysewerkzeugen und Auswahl treffen |  | 3d | 2018-08-09 | 2018-08-13 |  | 61d | 0d |  |  |  |  |
| 14 | 1.2.4 | [Core] Datenauswertung: Werkzeug-API/Dokumentation lesen |  | 6d | 2018-08-14 | 2018-08-21 | 13 | 61d |  |  |  |  |  |
| 15 | 1.2.5 | [Core] Dateiformate: relev. Standards evaluieren |  | 3d | 2018-08-09 | 2018-08-13 |  | 61d | 0d |  |  |  |  |
| 16 | 1.2.6 | [Core] Dateiformate: Nutzungsbedingungen u. Voraussetzungen klären |  | 6d | 2018-08-14 | 2018-08-21 | 15 | 61d |  |  |  |  |  |
| 17 | 1.2.7 | [Core] Übertragungsprotokolle: Industriestandards auswerten |  | 3d | 2018-08-09 | 2018-08-13 |  | 15d | 0d |  |  |  |  |
| 18 | 1.2.8 | [Core] Übertragungsprotokolle: Dokumentation u. Hinweise lesen |  | 6d | 2018-08-14 | 2018-08-21 | 17 | 61d |  |  |  |  |  |
| 19 | 1.2.9 | [UI] Display: meist genutzte Technologien analysieren |  | 3d | 2018-08-09 | 2018-08-13 |  | 64d | 0d |  |  |  |  |
| 20 | 1.2.10 | [UI] Display: verfügbare Schnittstellen auswerten |  | 3d | 2018-08-14 | 2018-08-16 | 19 | 64d |  |  |  |  |  |
| 21 | 1.2.11 | [UI] Display: Lizenzgebühren und -modelle für Übertragungslösungen prüfen |  | 3d | 2018-08-14 | 2018-08-16 | 17 | 15d |  |  |  |  |  |
| 22 | 1.2.12 | [Sensorik] BLE-RFID: Implementierung |  | 14d | 2018-08-13 | 2018-08-30 | 11 | 0d |  |  |  |  |  |
| 23 | 1.2.13 | [Sensorik] BLE-RFID: Funktionstests |  | 5d | 2018-08-31 | 2018-09-06 | 22 | 49d |  |  |  |  |  |
| 24 | 1.2.14 | [Sensorik] BLE-RFID: Modultests |  | 5d | 2018-08-31 | 2018-09-06 | 22 | 0d |  |  |  |  |  |
| 25 | 1.2.15 | [Dokumentation] Schnittstellenbeschreibung (1) |  | 3d | 2018-09-07 | 2018-09-11 | 24 | 46d |  |  |  |  |  |
| 26 | 1.2.16 | [Meilenstein] Prototyp 1 | milestone | 0d | 2018-09-06 | 2018-09-06 | 24, 21 | 0d |  |  |  |  |  |

Notes:
- 2: Dies ist ein Sammelvorgang. Sammelvorgänge helfen beim Gliedern von Projekten in Abschnitten.
- 9: Dies ist ein Meilensteinvorgang. Legen Sie die Dauer eines Vorgangs auf 0t fest, um ein Ereignis im Projekt zu kennzeichnen.
- 10: Dies ist ein Sammelvorgang. Sammelvorgänge helfen beim Gliedern von Projekten in Abschnitten.
- 26: Dies ist ein Meilensteinvorgang. Legen Sie die Dauer eines Vorgangs auf 0t fest, um ein Ereignis im Projekt zu kennzeichnen.

| ID | WBS | Task | Type | Duration | Start | Finish | Predecessors | Total slack | Free slack |
| --- | --- | --- | --- | --- | --- | --- | --- | --- | --- |
| 27 | 1.3 | **Prototyp 2 [Mobile App, lokale Datenpersistenz, Lokaisierung]** |  | 27d | 2018-09-07 | 2018-10-15 | 26 | 0d |  |
| 28 | 1.3.1 | [UI] Smartphone-App: Fragmentierung der OS Versionen am Markt analysieren und Auswahl für welche Version entwickelt wird |  | 3d | 2018-09-07 | 2018-09-11 | 26 | 41d | 0d |
| 29 | 1.3.2 | [UI] Smartphone-App: Frameworks evaluieren und auswählen |  | 5d | 2018-09-12 | 2018-09-18 | 28 | 41d |  |
| 30 | 1.3.3 | [UI] Smartphone-App: Zielgruppenanalyse für UI und UX |  | 3d | 2018-09-07 | 2018-09-11 |  | 36d | 0d |
| 31 | 1.3.4 | [UI] Smartphone-App: Studie und Umfrage für die gewählte Zielgruppe zum UI Design |  | 10d | 2018-09-12 | 2018-09-25 | 30 | 36d |  |
| 32 | 1.3.5 | [Core] Datenbank: Datenbanktechnologien evaluieren |  | 3d | 2018-09-07 | 2018-09-11 | 26 | 46d |  |
| 33 | 1.3.6 | [Core] Server: Kosten evaluieren/einschätzen |  | 3d | 2018-09-07 | 2018-09-11 | 26 | 22d | 0d |
| 34 | 1.3.7 | [Core] Datenauswertung: Implementierung |  | 14d | 2018-09-12 | 2018-10-01 | 33 | 22d | 0d |
| 35 | 1.3.8 | [Core] Datenauswertung: Funktionstest |  | 5d | 2018-10-02 | 2018-10-08 | 34 | 22d | 0d |
| 36 | 1.3.9 | [Core] Datenauswertung: Modultest |  | 5d | 2018-10-09 | 2018-10-15 | 35 | 22d |  |
| 37 | 1.3.10 | [Core] Dateiformate: Implementierung |  | 8d | 2018-09-07 | 2018-09-18 | 26 | 37d | 0d |
| 38 | 1.3.11 | [Core] Dateiformate: Funktionstest |  | 4d | 2018-09-19 | 2018-09-24 | 37 | 37d |  |
| 39 | 1.3.12 | [Core] Dateiformate: Modultest |  | 4d | 2018-09-19 | 2018-09-24 | 37 | 37d |  |
| 40 | 1.3.13 | [Core] Übertragungsprotokolle: Implementierung |  | 16d | 2018-09-07 | 2018-09-28 | 26 | 0d |  |
| 41 | 1.3.14 | [Core] Übertragungsprotokolle: Funktionstest |  | 5d | 2018-10-01 | 2018-10-05 | 40 | 28d |  |
| 42 | 1.3.15 | [Core] Übertragungsprotokolle: Modultest |  | 5d | 2018-10-01 | 2018-10-05 | 40 | 0d |  |
| 43 | 1.3.16 | [Dokumentation] Schnittstellenbeschreibung (2) |  | 3d | 2018-10-08 | 2018-10-10 | 42 | 25d |  |
| 44 | 1.3.17 | [Dokumentation] Technische Dokumentation (1) |  | 4d | 2018-10-08 | 2018-10-11 | 42 | 24d |  |
| 45 | 1.3.18 | [Meilenstein] Prototyp 2 | milestone | 0d | 2018-10-05 | 2018-10-05 | 42 | 0d |  |
| 46 | 1.4 | **Prototyp 3: Finaler Prototyp zur Vorführung** |  | 28d | 2018-10-08 | 2018-11-14 | 45 | 0d |  |
| 47 | 1.4.1 | [Sensorik] WLAN: Evaluieren |  | 2d | 2018-10-08 | 2018-10-09 |  | 5d | 0d |
| 48 | 1.4.2 | [Sensorik] WLAN: Analysieren |  | 2d | 2018-10-10 | 2018-10-11 | 47 | 5d | 0d |
| 49 | 1.4.3 | [Sensorik] WLAN: Implementierung |  | 14d | 2018-10-12 | 2018-10-31 | 48 | 5d | 0d |
| 50 | 1.4.4 | [Sensorik] WLAN: Funktionstests |  | 5d | 2018-11-01 | 2018-11-07 | 49 | 5d |  |
| 51 | 1.4.5 | [Sensorik] WLAN: Modultests |  | 5d | 2018-11-01 | 2018-11-07 | 49 | 5d |  |
| 52 | 1.4.6 | [Sensorik] Laser: Evaluieren |  | 2d | 2018-10-08 | 2018-10-09 | 45 | 0d |  |
| 53 | 1.4.7 | [Sensorik] Laser: Analysieren |  | 2d | 2018-10-10 | 2018-10-11 | 52 | 0d |  |
| 54 | 1.4.8 | [Sensorik] Laser: Implementierung |  | 14d | 2018-10-12 | 2018-10-31 | 53 | 0d |  |
| 55 | 1.4.9 | [Sensorik] Laser: Funktionstests |  | 5d | 2018-11-01 | 2018-11-07 | 54 | 5d |  |
| 56 | 1.4.10 | [Sensorik] Laser: Modultests |  | 5d | 2018-11-01 | 2018-11-07 | 54 | 0d |  |
| 57 | 1.4.11 | [Sensorik] Integrationstest |  | 5d | 2018-11-08 | 2018-11-14 | 56 | 0d |  |
| 58 | 1.4.12 | [Core] Datesicherheit: Aktuelle Standards/Technik evaluieren und auswählen |  | 3d | 2018-10-08 | 2018-10-10 | 45 | 2d | 0d |
| 59 | 1.4.13 | [Core] Datesicherheit: gewählte Standards implementieren |  | 10d | 2018-10-11 | 2018-10-24 | 58 | 2d | 0d |
| 60 | 1.4.14 | [Core] Datesicherheit: Funktionstest |  | 5d | 2018-10-25 | 2018-10-31 | 59 | 2d | 0d |
| 61 | 1.4.15 | [Core] Integrationstest |  | 8d | 2018-11-01 | 2018-11-12 | 60 | 2d |  |
| 62 | 1.4.16 | [Datenhaltung] Server: Hardware installieren, einrichten |  | 5d | 2018-10-08 | 2018-10-12 | 45 | 20d | 0d |
| 63 | 1.4.17 | [Datenhaltung] Server: Systeme, Frameworks installieren und einrichten |  | 3d | 2018-10-15 | 2018-10-17 | 62 | 20d |  |
| 64 | 1.4.18 | [UI] Smartphone-App: Test |  | 5d | 2018-10-08 | 2018-10-12 | 45 | 18d | 0d |
| 65 | 1.4.19 | [Dokumentation] Schnittstellenbeschreibung (3) |  | 4d | 2018-10-15 | 2018-10-18 | 64 | 19d |  |
| 66 | 1.4.20 | [Dokumentation] Technische Dokumentation (2) |  | 5d | 2018-10-15 | 2018-10-19 | 64 | 18d |  |
| 67 | 1.4.21 | [Framework] Systemtest |  | 5d | 2018-10-15 | 2018-10-19 | 64 | 18d |  |
