# Simple Project Plan

Schedule from MS Project, 2018-07-20 to 2019-05-14, costs in €.

## Calendars

- Standard: Mon-Fri 08:00-12:00, 13:00-17:00; Sat-Sun off.

## Resources

| Resource | Group | Unit | Rate |
| --- | --- | --- | --- |
| Long Numair | Projektleitung |  | 50 |
| Achim Admin | Administrator |  | 18 |
| Claus Coder | Programmierer |  | 22 |
| Steven Sharp | Programmierer |  | 22 |
| Detlef Delphi | Programmierer |  | 22 |
| Peter Python | Programmierer |  | 22 |
| Pascal Paskal | Programmierer |  | 22 |
| Georg Graphic | Designer |  | 18.5 |
| Anne Adobe | Designer |  | 18.5 |
| Stephan Köpsel | IT-Sicherheit |  | 38 |
| Monika Mongo | Datenbankentwickler |  | 22 |
| Es Q'el | Datenbankentwickler |  | 22 |
| Constantin Consult | Berater |  | 16 |
| Leonard Latenz | Netzwerkspezialist |  | 18 |
| Jay Unit | Tester |  | 17.5 |
| Desirè Debug | Tester |  | 17.5 |
| Torben Tester | Tester |  | 17.5 |
| Willi Werkel | Werkstudent |  | 14 |
| Susi Sehr | Werkstudent |  | 14 |
| Markus Kannz | Werkstudent |  | 14 |
| Büroräume | Unterhaltungskosten |  |  |
| Parkplätze (16) | Unterhaltungskosten |  |  |
| Mahlzeiten (Mittag) | Unterhaltungskosten |  |  |
| Office-PC | Hardware | Stück | 800 |
| Office-VR-AR-PC | Hardware | Stück | 1400 |
| Visual Studio Enterprise | Software | Lizenz | 2575 |
| Oculus Rift | Hardware (VR) | Stück | 489 |
| VIVE HTC VR Brille | Hardware (VR) | Stück | 599 |
| Sony Playstation VR | Hardware (VR) | Stück | 229 |
| MS Hololens Dev | Hardware (VR/AR) | Stück | 3299 |
| Epson Moverio BT-300 | Hardware (AR) | Stück | 815 |
| Asus Mixed Reaöity Set HC102 | Hardware (VR/AR) | Stück | 450 |
| Apple Watch Series 3 | Hardware (Smartwatch) | Stück | 479 |
| Samsung Gear S3 Classic | Hardware (Smartwatch) | Stück | 221 |
| Asus ZenWatch 3 | Hardware (Smartwatch) | Stück | 199 |
| Huawei Watch 2 | Hardware (Smartwatch) | Stück | 240 |
| FRITZ!Box 7590 | Hardware (Netzwerk) | Stück | 250 |
| WD My Cloud Pro PR4100 (40TB) | Hardware (Netzwerk) | Stück | 2199 |
| Linksys Velop WiFi 3Pac | Hardware (Netzwerk) | Stück | 290 |
| Linksys LGS326 | Hardware (Netzwerk) | Stück | 155 |
| BLE-Beacon für Ausweise | Hardware (Locate) | Stück | 30 |
| infsoft Locatornodes (BLE, WLAN, RFID, UWB, GPS) | Hardware (Locate) | Stück | 150 |
| ServerPC (DBMS, Datenbank) | Hardware (Netzwerk) | Stück | 700 |

## Schedule

| ID | WBS | Task | Type | Duration | Start | Finish | Predecessors | Total slack | Free slack | Constraint | Resources | Work | Cost |
| --- | --- | --- | --- | --- | --- | --- | --- | --- | --- | --- | --- | --- | --- |
| 1 | 1 | **Projekt** |  | 212.62d | 2018-07-20 | 2019-05-14 |  | 0d |  |  | Büroräume [0.1%]; Mahlzeiten (Mittag) [0.1%]; Office-PC [20 Stück]; Parkplätze (16) [0.1%]; FRITZ!Box 7590 [1 Stück]; Linksys LGS326 [1 Stück]; Linksys Velop WiFi 3Pac [1 Stück]; WD My Cloud Pro PR4100 (40TB) [1 Stück] | 4241h | 140,154 |
| 2 | 1.1 | **Analyse und Entwurf** |  | 26.88d | 2018-07-20 | 2018-08-27 |  | 2.5d |  |  |  | 440h | 11,284 |
| 3 | 1.1.1 | Konzeptdokumentation |  | 4d | 2018-07-20 | 2018-07-25 |  | 2.5d | 0d |  | Claus Coder; Long Numair; Peter Python; Torben Tester; Constantin Consult | 160h | 4,080 |
| 4 | 1.1.2 | Anforderungskatalog |  | 3d | 2018-07-26 | 2018-07-30 | 3 | 2.5d | 0d |  | Claus Coder; Long Numair; Peter Python | 72h | 2,256 |
| 5 | 1.1.3 | Product Backlog |  | 3d | 2018-07-31 | 2018-08-02 | 4 | 2.5d | 0d |  | Claus Coder; Long Numair; Pascal Paskal; Torben Tester | 96h | 2,676 |
| 6 | 1.1.4 | User Stories entwickeln und Taskcards ableiten |  | 2d | 2018-08-03 | 2018-08-06 | 5 | 2.5d | 0d |  | Claus Coder; Pascal Paskal | 32h | 704 |
| 7 | 1.1.5 | Sprint Backlogs ableiten |  | 2d | 2018-08-07 | 2018-08-08 | 6 | 2.5d | 0d |  | Claus Coder; Pascal Paskal | 32h | 704 |
| 8 | 1.1.6 | [Dokumentation] Analyse-Dokumentation |  | 5.62d | 2018-08-07 | 2018-08-27 | 6 | 185.75d |  |  | Peter Python; Willi Werkel | 48h | 864 |
| 9 | 1.1.7 | Analyse und Entwurf | milestone | 0d | 2018-08-08 | 2018-08-08 | 7 | 2.5d | 0d |  |  |  |  |
| 10 | 1.2 | **Prototyp 1 (Sensorvorführung)** |  | 139.62d | 2018-08-09 | 2019-02-20 | 9 | 2.5d |  |  |  | 961h | 18,986 |
| 11 | 1.2.1 | [Sensorik] BLE-RFID: Evaluieren |  | 9.25d | 2018-08-09 | 2018-09-05 | 9 | 2.5d | 0d | start no earlier than 2018-08-02 | Susi Sehr; Markus Kannz; Claus Coder | 96h | 1,728 |
| 12 | 1.2.2 | [Sensorik] BLE-RFID: Analysieren |  | 3.88d | 2018-09-05 | 2018-09-27 | 11 | 162.88d |  |  | Claus Coder; Pascal Paskal | 32h | 704 |
| 13 | 1.2.3 | [Core] Datenauswertung: Auswerten v. Analysewerkzeugen und Auswahl treffen |  | 6d | 2018-08-09 | 2018-08-24 |  | 180.62d | 0d |  | Achim Admin; Pascal Paskal; Es Q'el | 72h | 1,488 |
| 14 | 1.2.4 | [Core] Datenauswertung: Werkzeug-API/Dokumentation lesen |  | 6d | 2018-08-27 | 2018-09-03 | 13 | 180.62d |  |  | Es Q'el; Pascal Paskal | 96h | 2,112 |
| 15 | 1.2.5 | [Core] Dateiformate: relev. Standards evaluieren |  | 3d | 2018-08-09 | 2018-08-13 |  | 176.5d | 0d |  | Peter Python | 24h | 528 |
| 16 | 1.2.6 | [Core] Dateiformate: Nutzungsbedingungen u. Voraussetzungen klären |  | 3.38d | 2018-08-14 | 2018-09-10 | 15 | 175.75d |  |  | Peter Python; Markus Kannz | 27h | 562 |
| 17 | 1.2.7 | [Core] Übertragungsprotokolle: Industriestandards auswerten |  | 3d | 2018-08-09 | 2018-08-13 |  | 35.5d | 0d |  | Pascal Paskal | 24h | 528 |
| 18 | 1.2.8 | [Core] Übertragungsprotokolle: Dokumentation u. Hinweise lesen |  | 12d | 2018-08-14 | 2019-02-06 | 17 | 69d |  |  | Pascal Paskal; Susi Sehr | 96h | 1,728 |
| 19 | 1.2.9 | [UI] Display: meist genutzte Technologien analysieren |  | 8.38d | 2018-08-09 | 2019-02-11 |  | 59.62d | 0d |  | Susi Sehr; Constantin Consult | 67h | 986 |
| 20 | 1.2.10 | [UI] Display: verfügbare Schnittstellen auswerten |  | 3.88d | 2019-02-11 | 2019-02-20 | 19 | 59d |  |  | Claus Coder; Susi Sehr | 35h | 682 |
| 21 | 1.2.11 | [UI] Display: Lizenzgebühren und -modelle für Übertragungslösungen prüfen |  | 3d | 2018-08-14 | 2018-08-16 | 17 | 35.5d | 32.88d |  | Constantin Consult | 24h | 384 |
| 22 | 1.2.12 | [Sensorik] BLE-RFID: Implementierung |  | 14d | 2018-09-05 | 2018-09-25 | 11 | 2.62d | 0d |  | Peter Python; Claus Coder | 224h | 4,928 |
| 23 | 1.2.13 | [Sensorik] BLE-RFID: Funktionstests |  | 5d | 2018-09-25 | 2018-10-02 | 22 | 150.75d | 149.75d |  | Jay Unit; Torben Tester | 80h | 1,400 |
| 24 | 1.2.14 | [Sensorik] BLE-RFID: Modultests |  | 5d | 2018-09-25 | 2018-10-02 | 22 | 2.62d | 0d |  | Desirè Debug | 40h | 700 |
| 25 | 1.2.15 | [Dokumentation] Schnittstellenbeschreibung (1) |  | 3d | 2018-10-02 | 2018-10-29 | 24 | 140.88d |  |  | Peter Python | 24h | 528 |
| 26 | 1.2.16 | [Meilenstein] Prototyp 1 | milestone | 0d | 2018-10-02 | 2018-10-02 | 24, 21 | 2.62d | 0d |  |  |  |  |

Notes:
- 2: Dies ist ein Sammelvorgang. Sammelvorgänge helfen beim Gliedern von Projekten in Abschnitten.
- 9: Dies ist ein Meilensteinvorgang. Legen Sie die Dauer eines Vorgangs auf 0t fest, um ein Ereignis im Projekt zu kennzeichnen.
- 10: Dies ist ein Sammelvorgang. Sammelvorgänge helfen beim Gliedern von Projekten in Abschnitten.
- 26: Dies ist ein Meilensteinvorgang. Legen Sie die Dauer eines Vorgangs auf 0t fest, um ein Ereignis im Projekt zu kennzeichnen.

| ID | WBS | Task | Type | Duration | Start | Finish | Predecessors | Total slack | Free slack | Resources | Work | Cost |
| --- | --- | --- | --- | --- | --- | --- | --- | --- | --- | --- | --- | --- |
| 27 | 1.3 | **Prototyp 2 [Mobile App, lokale Datenpersistenz, Lokaisierung]** |  | 120.75d | 2018-10-02 | 2019-03-20 | 26 | 2.62d |  |  | 1280h | 26,068 |
| 28 | 1.3.1 | [UI] Smartphone-App: Fragmentierung der OS Versionen am Markt analysieren und Auswahl für welche Version entwickelt wird |  | 5.62d | 2018-10-02 | 2018-10-22 | 26 | 133.62d | 0d | Claus Coder; Georg Graphic; Willi Werkel | 72h | 1,308 |
| 29 | 1.3.2 | [UI] Smartphone-App: Frameworks evaluieren und auswählen |  | 8d | 2018-10-22 | 2018-11-07 | 28 | 133.75d |  | Claus Coder; Georg Graphic | 80h | 1,620 |
| 30 | 1.3.3 | [UI] Smartphone-App: Zielgruppenanalyse für UI und UX |  | 5.62d | 2018-10-02 | 2018-10-22 |  | 23.75d | 0d | Anne Adobe; Constantin Consult; Susi Sehr | 72h | 1,164 |
| 31 | 1.3.4 | [UI] Smartphone-App: Studie und Umfrage für die gewählte Zielgruppe zum UI Design |  | 18.88d | 2018-10-22 | 2019-03-20 | 30 | 24d | 0d | Anne Adobe; Susi Sehr | 160h | 2,600 |
| 32 | 1.3.5 | [Core] Datenbank: Datenbanktechnologien evaluieren |  | 3d | 2018-10-02 | 2018-10-10 | 26 | 153.88d |  | Es Q'el | 24h | 528 |
| 33 | 1.3.6 | [Core] Server: Kosten evaluieren/einschätzen |  | 3d | 2018-10-02 | 2018-10-05 | 26 | 84.75d | 0d | Es Q'el; Long Numair | 48h | 1,728 |
| 34 | 1.3.7 | [Core] Datenauswertung: Implementierung |  | 27d | 2018-10-05 | 2018-12-19 | 33 | 84.75d | 0d | Claus Coder; Pascal Paskal | 224h | 4,928 |
| 35 | 1.3.8 | [Core] Datenauswertung: Funktionstest |  | 5d | 2019-01-01 | 2019-01-08 | 34 | 84.75d | 0d | Torben Tester | 40h | 700 |
| 36 | 1.3.9 | [Core] Datenauswertung: Modultest |  | 5d | 2019-01-08 | 2019-01-15 | 35 | 84.75d |  | Desirè Debug | 40h | 700 |
| 37 | 1.3.10 | [Core] Dateiformate: Implementierung |  | 8d | 2018-10-02 | 2018-11-21 | 26 | 112d | 0d | Peter Python | 64h | 1,408 |
| 38 | 1.3.11 | [Core] Dateiformate: Funktionstest |  | 4d | 2018-11-26 | 2018-11-30 | 37 | 116.75d |  | Jay Unit | 32h | 560 |
| 39 | 1.3.12 | [Core] Dateiformate: Modultest |  | 4d | 2018-11-21 | 2018-12-07 | 37 | 112d |  | Desirè Debug | 32h | 560 |
| 40 | 1.3.13 | [Core] Übertragungsprotokolle: Implementierung |  | 16d | 2018-10-02 | 2018-10-24 | 26 | 2.62d | 0d | Pascal Paskal; Peter Python | 256h | 5,632 |
| 41 | 1.3.14 | [Core] Übertragungsprotokolle: Funktionstest |  | 5d | 2018-10-24 | 2018-10-31 | 40 | 138.75d |  | Jay Unit | 40h | 700 |
| 42 | 1.3.15 | [Core] Übertragungsprotokolle: Modultest |  | 5d | 2018-10-24 | 2018-10-31 | 40 | 2.62d | 0d | Desirè Debug | 40h | 700 |
| 43 | 1.3.16 | [Dokumentation] Schnittstellenbeschreibung (2) |  | 3d | 2018-10-31 | 2018-11-05 | 42 | 135.75d |  | Peter Python | 24h | 528 |
| 44 | 1.3.17 | [Dokumentation] Technische Dokumentation (1) |  | 4d | 2018-10-31 | 2018-11-06 | 42 | 134.75d |  | Claus Coder | 32h | 704 |
| 45 | 1.3.18 | [Meilenstein] Prototyp 2 | milestone | 0d | 2018-10-31 | 2018-10-31 | 42 | 2.62d | 0d |  |  |  |
| 46 | 1.4 | **Prototyp 3: Finaler Prototyp zur Vorführung** |  | 138.75d | 2018-10-31 | 2019-05-14 | 45 | 0d |  |  | 1560h | 32,592 |
| 47 | 1.4.1 | [Sensorik] WLAN: Evaluieren |  | 6d | 2018-10-31 | 2018-11-28 |  | 2.62d | 0d | Pascal Paskal; Susi Sehr; Willi Werkel | 48h | 800 |
| 48 | 1.4.2 | [Sensorik] WLAN: Analysieren |  | 4d | 2018-11-28 | 2019-04-03 | 47 | 0d |  | Pascal Paskal; Susi Sehr | 32h | 576 |
| 49 | 1.4.3 | [Sensorik] WLAN: Implementierung |  | 14d | 2019-04-03 | 2019-04-23 | 48 | 0d |  | Claus Coder; Pascal Paskal | 224h | 4,928 |
| 50 | 1.4.4 | [Sensorik] WLAN: Funktionstests |  | 5d | 2019-04-23 | 2019-04-30 | 49 | 1d | 0d | Torben Tester | 40h | 700 |
| 51 | 1.4.5 | [Sensorik] WLAN: Modultests |  | 5d | 2019-04-23 | 2019-04-30 | 49 | 0d |  | Desirè Debug | 40h | 700 |
| 52 | 1.4.6 | [Sensorik] Laser: Evaluieren |  | 2d | 2018-11-05 | 2018-11-14 | 45 | 82d | 0d | Markus Kannz; Willi Werkel | 32h | 448 |
| 53 | 1.4.7 | [Sensorik] Laser: Analysieren |  | 4d | 2018-11-14 | 2018-11-28 | 52 | 83.75d | 0d | Markus Kannz; Peter Python | 32h | 576 |
| 54 | 1.4.8 | [Sensorik] Laser: Implementierung |  | 14d | 2018-11-28 | 2018-12-18 | 53 | 83.75d | 0d | Claus Coder; Peter Python | 224h | 4,928 |
| 55 | 1.4.9 | [Sensorik] Laser: Funktionstests |  | 5d | 2018-12-18 | 2018-12-25 | 54 | 90.75d | 89.75d | Jay Unit | 40h | 700 |
| 56 | 1.4.10 | [Sensorik] Laser: Modultests |  | 5d | 2018-12-26 | 2019-01-02 | 54 | 83.75d |  | Desirè Debug | 40h | 700 |
| 57 | 1.4.11 | [Sensorik] Integrationstest |  | 10d | 2019-04-30 | 2019-05-14 | 56, 51, 24 | 0d |  | Desirè Debug; Torben Tester | 80h | 1,400 |
| 58 | 1.4.12 | [Core] Datesicherheit: Aktuelle Standards/Technik evaluieren und auswählen |  | 3d | 2018-10-31 | 2018-11-05 | 45 | 98.75d | 0d | Stephan Köpsel | 24h | 912 |
| 59 | 1.4.13 | [Core] Datesicherheit: gewählte Standards implementieren |  | 15d | 2018-11-05 | 2018-12-07 | 58 | 98.75d | 0d | Pascal Paskal; Stephan Köpsel | 160h | 4,800 |
| 60 | 1.4.14 | [Core] Datesicherheit: Funktionstest |  | 5d | 2018-12-07 | 2018-12-14 | 59 | 98.75d | 0d | Jay Unit | 40h | 700 |
| 61 | 1.4.15 | [Core] Integrationstest |  | 8d | 2018-12-14 | 2018-12-26 | 60 | 98.75d |  | Desirè Debug | 64h | 1,120 |
| 62 | 1.4.16 | [Datenhaltung] Server: Hardware installieren, einrichten |  | 5d | 2018-10-31 | 2018-11-07 | 45 | 125.75d | 0d | Achim Admin; Leonard Latenz | 80h | 1,440 |
| 63 | 1.4.17 | [Datenhaltung] Server: Systeme, Frameworks installieren und einrichten |  | 3.12d | 2018-11-07 | 2018-11-19 | 62 | 125.75d |  | Achim Admin; Monika Mongo | 48h | 960 |
| 64 | 1.4.18 | [UI] Smartphone-App: Test |  | 5d | 2019-03-20 | 2019-03-27 | 45, 31, 21 | 24d | 0d | Jay Unit; Georg Graphic | 80h | 1,440 |
| 65 | 1.4.19 | [Dokumentation] Schnittstellenbeschreibung (3) |  | 4d | 2019-04-30 | 2019-05-06 | 64, 23, 50, 55 | 1d | 0d | Peter Python | 32h | 704 |
| 66 | 1.4.20 | [Dokumentation] Technische Dokumentation (2) |  | 5d | 2019-03-27 | 2019-04-03 | 64 | 24d | 23d | Claus Coder | 40h | 880 |
| 67 | 1.4.21 | [Framework] Systemtest |  | 5d | 2019-05-06 | 2019-05-13 | 65, 66 | 1d |  | Achim Admin; Jay Unit; Monika Mongo; Pascal Paskal | 160h | 3,180 |
