# Simple Project Plan

Schedule from MS Project, 2018-07-20 to 2019-04-08, costs in €.

## Calendars

- Standard: Mon-Fri 08:00-12:00, 13:00-17:00; Sat-Sun off.

## Resources

| Resource | Group | Unit | Rate |
| --- | --- | --- | --- |
| Long Numair | Projektleitung |  | 50 |
| Achim Admin | Administrator |  | 18 |
| Claus Coder | Programmierer |  | 22 |
| Steven Sharp | Programmierer |  | 22 |
| Detlef Delphi | Programmierer |  | 22 |
| Peter Python | Programmierer |  | 22 |
| Pascal Paskal | Programmierer |  | 22 |
| Georg Graphic | Designer |  | 18.5 |
| Anne Adobe | Designer |  | 18.5 |
| Stephan Köpsel | IT-Sicherheit |  | 38 |
| Monika Mongo | Datenbankentwickler |  | 22 |
| Es Q'el | Datenbankentwickler |  | 22 |
| Constantin Consult | Berater |  | 16 |
| Leonard Latenz | Netzwerkspezialist |  | 18 |
| Jay Unit | Tester |  | 17.5 |
| Desirè Debug | Tester |  | 17.5 |
| Torben Tester | Tester |  | 17.5 |
| Willi Werkel | Werkstudent |  | 14 |
| Susi Sehr | Werkstudent |  | 14 |
| Markus Kannz | Werkstudent |  | 14 |
| Büroräume | Unterhaltungskosten |  |  |
| Parkplätze (14) | Unterhaltungskosten |  |  |
| Mahlzeiten (Mittag) | Unterhaltungskosten |  |  |
| Office-PC | Hardware | Stück | 800 |
| Office-VR-AR-PC | Hardware | Stück | 1400 |
| Visual Studio Enterprise | Software | Lizenz | 2575 |
| Oculus Rift | Hardware (VR) | Stück | 489 |
| VIVE HTC VR Brille | Hardware (VR) | Stück | 599 |
| Sony Playstation VR | Hardware (VR) | Stück | 229 |
| MS Hololens Dev | Hardware (VR/AR) | Stück | 3299 |
| Epson Moverio BT-300 | Hardware (AR) | Stück | 815 |
| Asus Mixed Reaöity Set HC102 | Hardware (VR/AR) | Stück | 450 |
| Apple Watch Series 3 | Hardware (Smartwatch) | Stück | 479 |
| Samsung Gear S3 Classic | Hardware (Smartwatch) | Stück | 221 |
| Asus ZenWatch 3 | Hardware (Smartwatch) | Stück | 199 |
| Huawei Watch 2 | Hardware (Smartwatch) | Stück | 240 |
| FRITZ!Box 7590 | Hardware (Netzwerk) | Stück | 250 |
| WD My Cloud Pro PR4100 (40TB) | Hardware (Netzwerk) | Stück | 2199 |
| Linksys Velop WiFi 3Pac | Hardware (Netzwerk) | Stück | 290 |
| Linksys LGS326 | Hardware (Netzwerk) | Stück | 155 |
| BLE-Beacon für Ausweise | Hardware (Locate) | Stück | 30 |
| infsoft Locatornodes (BLE, WLAN, RFID, UWB, GPS) | Hardware (Locate) | Stück | 150 |
| ServerPC (DBMS, Datenbank) | Hardware (Netzwerk) | Stück | 700 |

## Schedule

| ID | WBS | Task | Type | Duration | Start | Finish | Predecessors | Total slack | Free slack | Constraint | Resources | Work | Cost |
| --- | --- | --- | --- | --- | --- | --- | --- | --- | --- | --- | --- | --- | --- |
| 1 | 1 | **Projekt** |  | 186.88d | 2018-07-20 | 2019-04-08 |  | 0d |  |  | Büroräume [0.1%]; Mahlzeiten (Mittag) [0.1%]; Office-PC [20 Stück]; Parkplätze (14) [0.1%]; FRITZ!Box 7590 [1 Stück]; Linksys LGS326 [1 Stück]; Linksys Velop WiFi 3Pac [1 Stück]; WD My Cloud Pro PR4100 (40TB) [2 Stück]; Visual Studio Enterprise [6 Lizenz]; Apple Watch Series 3 [1 Stück]; Asus ZenWatch 3 [1 Stück]; BLE-Beacon für Ausweise [3 Stück]; Huawei Watch 2 [1 Stück]; infsoft Locatornodes (BLE, WLAN, RFID, UWB, GPS) [5 Stück]; Oculus Rift [1 Stück]; Office-VR-AR-PC [1 Stück]; Samsung Gear S3 Classic [1 Stück]; ServerPC (DBMS, Datenbank) [1 Stück]; Sony Playstation VR [1 Stück]; VIVE HTC VR Brille [1 Stück] | 3614h | 150,564 |
| 2 | 1.1 | **Analyse und Entwurf** |  | 23.88d | 2018-07-20 | 2018-08-22 |  | 1.5d |  |  |  | 440h | 11,284 |
| 3 | 1.1.1 | Konzeptdokumentation |  | 4d | 2018-07-20 | 2018-07-25 |  | 1.5d | 0d |  | Claus Coder; Long Numair; Peter Python; Torben Tester; Constantin Consult | 160h | 4,080 |
| 4 | 1.1.2 | Anforderungskatalog |  | 3d | 2018-07-26 | 2018-07-30 | 3 | 1.5d | 0d |  | Claus Coder; Long Numair; Peter Python | 72h | 2,256 |
| 5 | 1.1.3 | Product Backlog |  | 3d | 2018-07-31 | 2018-08-02 | 4 | 1.5d | 0d |  | Claus Coder; Long Numair; Pascal Paskal; Torben Tester | 96h | 2,676 |
| 6 | 1.1.4 | User Stories entwickeln und Taskcards ableiten |  | 2d | 2018-08-03 | 2018-08-06 | 5 | 225.88d | 0d |  | Claus Coder; Pascal Paskal | 32h | 704 |
| 7 | 1.1.5 | Sprint Backlogs ableiten |  | 2d | 2018-08-07 | 2018-08-08 | 6 | 225.88d | 141.88d |  | Claus Coder; Pascal Paskal | 32h | 704 |
| 8 | 1.1.6 | [Dokumentation] Analyse-Dokumentation |  | 5.62d | 2018-08-03 | 2018-08-22 | 5 | 1.5d | 0d |  | Peter Python; Willi Werkel | 48h | 864 |
| 9 | 1.1.7 | Analyse und Entwurf | milestone | 0d | 2018-08-22 | 2018-08-22 | 8 | 2.62d | 0d |  |  |  |  |
| 10 | 1.2 | **Prototyp 1 (Sensorvorführung)** |  | 37.75d | 2018-08-22 | 2018-10-15 | 9 | 2.62d |  |  |  | 804h | 16,268 |
| 11 | 1.2.1 | [Sensorik] BLE-RFID: Evaluieren |  | 4d | 2018-08-22 | 2018-08-28 | 9 | 6.75d | 0d | start no earlier than 2018-08-02 | Susi Sehr; Markus Kannz; Claus Coder | 35h | 738 |
| 12 | 1.2.2 | [Sensorik] BLE-RFID: Analysieren |  | 2d | 2018-08-29 | 2018-08-31 | 11 | 6.75d | 0d |  | Pascal Paskal | 16h | 352 |
| 13 | 1.2.3 | [Core] Datenauswertung: Auswerten v. Analysewerkzeugen und Auswahl treffen |  | 5.88d | 2018-08-22 | 2018-09-07 | 9 | 58.75d | 0d |  | Achim Admin; Pascal Paskal; Es Q'el | 72h | 1,488 |
| 14 | 1.2.4 | [Core] Datenauswertung: Werkzeug-API/Dokumentation lesen |  | 6d | 2018-09-07 | 2018-09-17 | 13 | 58.75d | 56.88d |  | Es Q'el; Pascal Paskal | 96h | 2,112 |
| 15 | 1.2.5 | [Core] Dateiformate: relev. Standards evaluieren |  | 3d | 2018-08-22 | 2018-08-27 | 9 | 41.62d | 0d |  | Peter Python | 24h | 528 |
| 16 | 1.2.6 | [Core] Dateiformate: Nutzungsbedingungen u. Voraussetzungen klären |  | 3d | 2018-08-27 | 2018-08-30 | 15 | 41.62d | 40.12d |  | Peter Python; Markus Kannz | 27h | 562 |
| 17 | 1.2.7 | [Core] Übertragungsprotokolle: Industriestandards auswerten |  | 3d | 2018-08-22 | 2018-08-27 | 9 | 14.62d | 0d |  | Pascal Paskal | 24h | 528 |
| 18 | 1.2.8 | [Core] Übertragungsprotokolle: Dokumentation u. Hinweise lesen |  | 2d | 2018-08-27 | 2018-08-29 | 17 | 31.75d |  |  | Pascal Paskal; Susi Sehr | 16h | 352 |
| 19 | 1.2.9 | [UI] Display: meist genutzte Technologien analysieren |  | 8d | 2018-08-22 | 2018-10-01 | 9 | 0d |  |  | Susi Sehr; Constantin Consult | 67h | 986 |
| 20 | 1.2.10 | [UI] Display: verfügbare Schnittstellen auswerten |  | 3.88d | 2018-10-01 | 2018-10-10 | 19 | 0d |  |  | Claus Coder; Susi Sehr | 35h | 682 |
| 21 | 1.2.11 | [UI] Display: Lizenzgebühren und -modelle für Übertragungslösungen prüfen |  | 3d | 2018-10-10 | 2018-10-15 | 20 | 0d |  |  | Constantin Consult | 24h | 384 |
| 22 | 1.2.12 | [Sensorik] BLE-RFID: Implementierung |  | 14d | 2018-08-31 | 2018-09-20 | 12 | 6.75d | 0d |  | Peter Python; Claus Coder | 224h | 4,928 |
| 23 | 1.2.13 | [Sensorik] BLE-RFID: Funktionstests |  | 5d | 2018-09-20 | 2018-09-27 | 22 | 6.75d | 0d |  | Jay Unit; Torben Tester | 80h | 1,400 |
| 24 | 1.2.14 | [Sensorik] BLE-RFID: Modultests |  | 5d | 2018-09-27 | 2018-10-04 | 23 | 6.75d |  |  | Desirè Debug | 40h | 700 |
| 25 | 1.2.15 | [Dokumentation] Schnittstellenbeschreibung (1) |  | 3d | 2018-09-27 | 2018-10-02 | 23 | 134d |  |  | Peter Python | 24h | 528 |
| 26 | 1.2.16 | [Meilenstein] Prototyp 1 | milestone | 0d | 2018-10-15 | 2018-10-15 | 24, 21, 18, 16, 14 | 0d |  |  |  |  |  |

Notes:
- 2: Dies ist ein Sammelvorgang. Sammelvorgänge helfen beim Gliedern von Projekten in Abschnitten.
- 9: Dies ist ein Meilensteinvorgang. Legen Sie die Dauer eines Vorgangs auf 0t fest, um ein Ereignis im Projekt zu kennzeichnen.
- 10: Dies ist ein Sammelvorgang. Sammelvorgänge helfen beim Gliedern von Projekten in Abschnitten.
- 26: Dies ist ein Meilensteinvorgang. Legen Sie die Dauer eines Vorgangs auf 0t fest, um ein Ereignis im Projekt zu kennzeichnen.

| ID | WBS | Task | Type | Duration | Start | Finish | Predecessors | Total slack | Free slack | Resources | Work | Cost |
| --- | --- | --- | --- | --- | --- | --- | --- | --- | --- | --- | --- | --- |
| 27 | 1.3 | **Prototyp 2 [Mobile App, lokale Datenpersistenz, Lokaisierung]** |  | 45d | 2018-10-15 | 2018-12-17 | 26 | 0d |  |  | 985h | 20,377 |
| 28 | 1.3.1 | [UI] Smartphone-App: Fragmentierung der OS Versionen am Markt analysieren und Auswahl für welche Version entwickelt wird |  | 3d | 2018-10-15 | 2018-10-18 | 26 | 119.5d | 0d | Claus Coder; Georg Graphic; Willi Werkel | 52h | 1,015.5 |
| 29 | 1.3.2 | [UI] Smartphone-App: Frameworks evaluieren und auswählen |  | 3d | 2018-10-18 | 2018-10-23 | 28 | 119.5d |  | Georg Graphic; Willi Werkel | 27h | 481.5 |
| 30 | 1.3.3 | [UI] Smartphone-App: Zielgruppenanalyse für UI und UX |  | 5.38d | 2018-10-15 | 2018-11-05 | 26 | 80.25d | 0d | Anne Adobe; Constantin Consult; Susi Sehr | 72h | 1,164 |
| 31 | 1.3.4 | [UI] Smartphone-App: Studie und Umfrage für die gewählte Zielgruppe zum UI Design |  | 10d | 2018-11-05 | 2018-11-19 | 30 | 80.25d | 0d | Anne Adobe; Susi Sehr | 82h | 1,508 |
| 32 | 1.3.5 | [UI] Smarphone-App Prototyp erstellen |  | 12d | 2018-11-19 | 2018-12-17 | 31 | 80.25d | 91.25d | Pascal Paskal; Claus Coder | 112h | 2,464 |
| 33 | 1.3.6 | [Core] Datenbank: Datenbanktechnologien evaluieren |  | 3d | 2018-10-15 | 2018-10-18 | 26 | 89.38d | 0d | Es Q'el | 24h | 528 |
| 34 | 1.3.7 | [Core] Server: Kosten evaluieren/einschätzen |  | 3d | 2018-10-18 | 2018-10-23 | 33 | 89.38d | 0d | Long Numair; Monika Mongo | 48h | 1,728 |
| 35 | 1.3.8 | [Core] Datenauswertung: Implementierung |  | 12d | 2018-10-23 | 2018-11-14 | 34 | 89.38d | 0d | Claus Coder; Pascal Paskal | 112h | 2,464 |
| 36 | 1.3.9 | [Core] Datenauswertung: Funktionstest |  | 5d | 2018-11-14 | 2018-11-21 | 35 | 89.38d | 0d | Torben Tester | 40h | 700 |
| 37 | 1.3.10 | [Core] Datenauswertung: Modultest |  | 5d | 2018-11-21 | 2018-11-28 | 36 | 93.25d |  | Desirè Debug | 40h | 700 |
| 38 | 1.3.11 | [Core] Dateiformate: Implementierung |  | 8d | 2018-10-15 | 2018-11-05 | 26 | 97.75d | 0d | Peter Python | 64h | 1,408 |
| 39 | 1.3.12 | [Core] Dateiformate: Funktionstest |  | 4d | 2018-11-05 | 2018-11-09 | 38 | 97.75d | 0d | Jay Unit | 32h | 560 |
| 40 | 1.3.13 | [Core] Dateiformate: Modultest |  | 4d | 2018-11-09 | 2018-11-15 | 39 | 102.62d |  | Desirè Debug | 32h | 560 |
| 41 | 1.3.14 | [Core] Übertragungsprotokolle: Implementierung |  | 7d | 2018-10-15 | 2018-10-24 | 26 | 0d |  | Pascal Paskal; Peter Python | 112h | 2,464 |
| 42 | 1.3.15 | [Core] Übertragungsprotokolle: Funktionstest |  | 5d | 2018-10-24 | 2018-10-31 | 41 | 0d |  | Jay Unit | 40h | 700 |
| 43 | 1.3.16 | [Core] Übertragungsprotokolle: Modultest |  | 5d | 2018-10-31 | 2018-11-07 | 42 | 0d |  | Desirè Debug | 40h | 700 |
| 44 | 1.3.17 | [Dokumentation] Schnittstellenbeschreibung (2) |  | 3d | 2018-11-29 | 2018-12-04 | 42, 39, 36 | 89.62d |  | Peter Python | 24h | 528 |
| 45 | 1.3.18 | [Dokumentation] Technische Dokumentation (1) |  | 4d | 2018-11-07 | 2018-11-13 | 43 | 104.25d |  | Claus Coder | 32h | 704 |
| 46 | 1.3.19 | [Meilenstein] Prototyp 2 | milestone | 0d | 2018-11-07 | 2018-11-07 | 43 | 0d |  |  |  |  |
| 47 | 1.4 | **Prototyp 3: Finaler Prototyp zur Vorführung** |  | 108.25d | 2018-11-07 | 2019-04-08 | 46 | 0d |  |  | 1385h | 28,486 |
| 48 | 1.4.1 | [Sensorik] WLAN: Evaluieren |  | 5.12d | 2018-11-07 | 2018-12-05 | 46 | 0d |  | Pascal Paskal; Susi Sehr; Willi Werkel | 43h | 690 |
| 49 | 1.4.2 | [Sensorik] WLAN: Analysieren |  | 4d | 2018-12-05 | 2019-02-11 | 48 | 0d |  | Pascal Paskal; Susi Sehr | 32h | 576 |
| 50 | 1.4.3 | [Sensorik] Universal Schnittstelle: Implementierung (1) |  | 12d | 2019-02-11 | 2019-02-27 | 49 | 0d |  | Claus Coder; Pascal Paskal | 158h | 3,476 |
| 51 | 1.4.4 | [Sensorik] WLAN: Funktionstests |  | 5d | 2019-02-27 | 2019-03-06 | 50 | 0d |  | Torben Tester | 40h | 700 |
| 52 | 1.4.5 | [Sensorik] WLAN: Modultests |  | 5d | 2019-03-06 | 2019-03-13 | 51 | 0d |  | Desirè Debug | 40h | 700 |
| 53 | 1.4.6 | [Sensorik] Laser: Evaluieren |  | 2d | 2018-11-07 | 2018-11-21 | 46 | 53.25d | 0d | Markus Kannz; Willi Werkel | 32h | 448 |
| 54 | 1.4.7 | [Sensorik] Laser: Analysieren |  | 3.38d | 2018-11-21 | 2018-12-05 | 53 | 53.25d | 0d | Markus Kannz; Peter Python | 32h | 576 |
| 55 | 1.4.8 | [Sensorik] Universal-Schnittstelle: Implementierung abschließen |  | 7d | 2018-12-05 | 2018-12-14 | 54 | 53.25d | 0d | Claus Coder; Peter Python | 112h | 2,464 |
| 56 | 1.4.9 | [Sensorik] Laser: Funktionstests |  | 5d | 2018-12-14 | 2018-12-21 | 55 | 53.25d | 0d | Jay Unit | 40h | 700 |
| 57 | 1.4.10 | [Sensorik] Laser: Modultests |  | 5d | 2018-12-21 | 2018-12-28 | 56 | 53.25d |  | Desirè Debug | 40h | 700 |
| 58 | 1.4.11 | [Sensorik] Integrationstest |  | 5d | 2019-03-13 | 2019-03-20 | 57, 52, 24 | 0d |  | Desirè Debug; Torben Tester | 80h | 1,400 |
| 59 | 1.4.12 | [Core] Datesicherheit: Aktuelle Standards/Technik evaluieren und auswählen |  | 3d | 2018-11-07 | 2018-11-12 | 46 | 79.25d | 0d | Stephan Köpsel | 24h | 912 |
| 60 | 1.4.13 | [Core] Datesicherheit: gewählte Standards implementieren |  | 8d | 2018-11-12 | 2018-11-22 | 59 | 79.25d | 0d | Pascal Paskal; Stephan Köpsel | 128h | 3,840 |
| 61 | 1.4.14 | [Core] Datesicherheit: Funktionstest |  | 5d | 2018-11-22 | 2018-11-29 | 60 | 79.25d |  | Jay Unit | 40h | 700 |
| 62 | 1.4.15 | [Core] Integrationstest |  | 8d | 2019-03-20 | 2019-04-01 | 61, 58 | 0d |  | Desirè Debug | 64h | 1,120 |
| 63 | 1.4.16 | [Datenhaltung] Server: Hardware installieren, einrichten |  | 5d | 2018-11-07 | 2018-11-14 | 46 | 100.25d | 0d | Achim Admin; Leonard Latenz | 80h | 1,440 |
| 64 | 1.4.17 | [Datenhaltung] Server: Systeme, Frameworks installieren und einrichten |  | 3d | 2018-11-14 | 2018-11-19 | 63 | 100.25d |  | Achim Admin; Monika Mongo | 48h | 960 |
| 65 | 1.4.18 | [UI] Smarphone-App Implementierung |  | 5d | 2018-11-07 | 2018-11-14 | 46 | 93.25d | 0d | Peter Python | 40h | 880 |
| 66 | 1.4.19 | [UI] Smartphone-App: Test |  | 5d | 2018-11-14 | 2018-11-21 | 65 | 93.25d | 0d | Jay Unit; Georg Graphic | 80h | 1,440 |
| 67 | 1.4.20 | [Dokumentation] Schnittstellenbeschreibung (3) |  | 4d | 2018-11-21 | 2018-11-27 | 66 | 94.25d |  | Peter Python | 32h | 704 |
| 68 | 1.4.21 | [Dokumentation] Technische Dokumentation (2) |  | 5d | 2018-11-21 | 2018-11-28 | 66 | 93.25d |  | Claus Coder | 40h | 880 |
| 69 | 1.4.22 | [Framework] Systemtest |  | 5d | 2019-04-01 | 2019-04-08 | 66, 62 | 0d |  | Achim Admin; Jay Unit; Monika Mongo; Pascal Paskal | 160h | 3,180 |
